# 市政道路雨污分流改造工程

Schedule from MS Project XML, 2027-03-01 to 2027-07-02.

## Calendars

- 标准工作周: Mon-Fri 08:00-12:00, 13:00-17:00; Sat-Sun off.

## Schedule

| ID | WBS | Task | Type | Duration | Start | Finish | Predecessors | Total slack |
| --- | --- | --- | --- | --- | --- | --- | --- | --- |
| 1 | 1 | **市政道路雨污分流改造工程** |  | 90d | 2027-03-01 | 2027-07-02 |  | 0d |
| 2 | 1.1 | **前期准备与开工** |  | 8d | 2027-03-01 | 2027-03-10 |  | 0d |
| 3 | 1.1.1 | 项目启动 | milestone | 0d | 2027-03-01 | 2027-03-01 |  | 0d |
| 4 | 1.1.2 | 施工图会审 |  | 2d | 2027-03-01 | 2027-03-02 | 3 | 0d |
| 5 | 1.1.3 | 道路控制测量 |  | 3d | 2027-03-01 | 2027-03-03 | 3 | 5d |
| 6 | 1.1.4 | 地下管线探测 |  | 4d | 2027-03-01 | 2027-03-04 | 3 | 4d |
| 7 | 1.1.5 | 交通导改方案审批 |  | 3d | 2027-03-03 | 2027-03-05 | 4 | 0d |
| 8 | 1.1.6 | 现场围挡施工 |  | 2d | 2027-03-08 | 2027-03-09 | 7 | 1d |
| 9 | 1.1.7 | 临建设施布置 |  | 3d | 2027-03-08 | 2027-03-10 | 7 | 0d |
| 10 | 1.1.8 | 开工条件确认 | milestone | 0d | 2027-03-10 | 2027-03-10 | 5, 6, 8, 9 | 0d |
| 11 | 1.2 | **第一施工段** |  | 29d | 2027-03-11 | 2027-04-20 |  | 0d |
| 12 | 1.2.1 | 第一段测量放样 |  | 1d | 2027-03-11 | 2027-03-11 | 10 | 0d |
| 13 | 1.2.2 | 第一段路面破除 |  | 3d | 2027-03-12 | 2027-03-16 | 12 | 0d |
| 14 | 1.2.3 | 第一段沟槽开挖 |  | 5d | 2027-03-17 | 2027-03-23 | 13 | 0d |
| 15 | 1.2.4 | 第一段沟槽支护 |  | 3d | 2027-03-17 | 2027-03-19 | 14SS | 75d |
| 16 | 1.2.5 | 第一段管道基础 |  | 2d | 2027-03-24 | 2027-03-25 | 14 | 0d |
| 17 | 1.2.6 | 第一段雨水管安装 |  | 5d | 2027-03-26 | 2027-04-01 | 16 | 0d |
| 18 | 1.2.7 | 第一段污水管安装 |  | 5d | 2027-03-26 | 2027-04-01 | 16 | 0d |
| 19 | 1.2.8 | 第一段检查井施工 |  | 4d | 2027-04-02 | 2027-04-07 | 17, 18 | 0d |
| 20 | 1.2.9 | 第一段闭水试验 |  | 2d | 2027-04-08 | 2027-04-09 | 19 | 0d |
| 21 | 1.2.10 | 第一段沟槽回填 |  | 3d | 2027-04-12 | 2027-04-14 | 20 | 0d |
| 22 | 1.2.11 | 第一段道路基层恢复 |  | 4d | 2027-04-15 | 2027-04-20 | 21 | 0d |
| 23 | 1.2.12 | 第一施工段完成 | milestone | 0d | 2027-04-20 | 2027-04-20 | 22 | 0d |
| 24 | 1.3 | **第二施工段** |  | 37d | 2027-04-21 | 2027-06-10 |  | 0d |
| 25 | 1.3.1 | 第二段测量放样 |  | 1d | 2027-04-21 | 2027-04-21 | 23 | 0d |
| 26 | 1.3.2 | 第二段路面破除 |  | 4d | 2027-04-22 | 2027-04-27 | 25 | 0d |
| 27 | 1.3.3 | 第二段沟槽开挖 |  | 6d | 2027-04-28 | 2027-05-05 | 26 | 0d |
| 28 | 1.3.4 | 第二段沟槽支护 |  | 4d | 2027-04-28 | 2027-05-03 | 27SS | 44d |
| 29 | 1.3.5 | 第二段砂石基础 |  | 3d | 2027-05-06 | 2027-05-10 | 27 | 0d |
| 30 | 1.3.6 | 第二段雨水箱涵施工 |  | 7d | 2027-05-11 | 2027-05-19 | 29 | 0d |
| 31 | 1.3.7 | 第二段污水管安装 |  | 5d | 2027-05-11 | 2027-05-17 | 29 | 2d |
| 32 | 1.3.8 | 第二段检查井施工 |  | 5d | 2027-05-20 | 2027-05-26 | 30, 31 | 0d |
| 33 | 1.3.9 | 第二段闭水试验 |  | 2d | 2027-05-27 | 2027-05-28 | 32 | 0d |
| 34 | 1.3.10 | 第二段分层回填 |  | 4d | 2027-05-31 | 2027-06-03 | 33 | 0d |
| 35 | 1.3.11 | 第二段道路基层恢复 |  | 5d | 2027-06-04 | 2027-06-10 | 34 | 0d |
| 36 | 1.3.12 | 第二施工段完成 | milestone | 0d | 2027-06-10 | 2027-06-10 | 35 | 0d |

Notes:
- 1: TECHNICAL_SAMPLE_KEY=root
- 2: TECHNICAL_SAMPLE_KEY=prep
- 3: TECHNICAL_SAMPLE_KEY=start
- 4: TECHNICAL_SAMPLE_KEY=drawing
- 5: TECHNICAL_SAMPLE_KEY=survey
- 6: TECHNICAL_SAMPLE_KEY=utility
- 7: TECHNICAL_SAMPLE_KEY=traffic
- 8: TECHNICAL_SAMPLE_KEY=fence
- 9: TECHNICAL_SAMPLE_KEY=temporary
- 10: TECHNICAL_SAMPLE_KEY=ready
- 11: TECHNICAL_SAMPLE_KEY=section_a
- 12: TECHNICAL_SAMPLE_KEY=a_layout
- 13: TECHNICAL_SAMPLE_KEY=a_break
- 14: TECHNICAL_SAMPLE_KEY=a_excavate
- 15: TECHNICAL_SAMPLE_KEY=a_support
- 16: TECHNICAL_SAMPLE_KEY=a_base
- 17: TECHNICAL_SAMPLE_KEY=a_storm
- 18: TECHNICAL_SAMPLE_KEY=a_sewer
- 19: TECHNICAL_SAMPLE_KEY=a_well
- 20: TECHNICAL_SAMPLE_KEY=a_test
- 21: TECHNICAL_SAMPLE_KEY=a_backfill
- 22: TECHNICAL_SAMPLE_KEY=a_subbase
- 23: TECHNICAL_SAMPLE_KEY=a_done
- 24: TECHNICAL_SAMPLE_KEY=section_b
- 25: TECHNICAL_SAMPLE_KEY=b_layout
- 26: TECHNICAL_SAMPLE_KEY=b_break
- 27: TECHNICAL_SAMPLE_KEY=b_excavate
- 28: TECHNICAL_SAMPLE_KEY=b_support
- 29: TECHNICAL_SAMPLE_KEY=b_base
- 30: TECHNICAL_SAMPLE_KEY=b_storm
- 31: TECHNICAL_SAMPLE_KEY=b_sewer
- 32: TECHNICAL_SAMPLE_KEY=b_well
- 33: TECHNICAL_SAMPLE_KEY=b_test
- 34: TECHNICAL_SAMPLE_KEY=b_backfill
- 35: TECHNICAL_SAMPLE_KEY=b_subbase
- 36: TECHNICAL_SAMPLE_KEY=b_done

| ID | WBS | Task | Type | Duration | Start | Finish | Predecessors | Total slack |
| --- | --- | --- | --- | --- | --- | --- | --- | --- |
| 37 | 1.4 | **全线恢复与验收** |  | 16d | 2027-06-11 | 2027-07-02 |  | 0d |
| 38 | 1.4.1 | 管道 CCTV 检测 |  | 3d | 2027-06-11 | 2027-06-15 | 23, 36 | 0d |
| 39 | 1.4.2 | 雨污系统联调 |  | 2d | 2027-06-16 | 2027-06-17 | 38 | 0d |
| 40 | 1.4.3 | 道路面层恢复 |  | 5d | 2027-06-18 | 2027-06-24 | 39 | 0d |
| 41 | 1.4.4 | 交通标线恢复 |  | 2d | 2027-06-25 | 2027-06-28 | 40 | 0d |
| 42 | 1.4.5 | 竣工测量 |  | 2d | 2027-06-25 | 2027-06-28 | 40 | 0d |
| 43 | 1.4.6 | 竣工资料汇编 |  | 4d | 2027-06-18 | 2027-06-23 | 39 | 3d |
| 44 | 1.4.7 | 工程预验收 |  | 1d | 2027-06-29 | 2027-06-29 | 41, 42, 43 | 0d |
| 45 | 1.4.8 | 预验收问题整改 |  | 3d | 2027-06-30 | 2027-07-02 | 44 | 0d |
| 46 | 1.4.9 | 竣工验收 | milestone | 0d | 2027-07-02 | 2027-07-02 | 45 | 0d |

Notes:
- 37: TECHNICAL_SAMPLE_KEY=close
- 38: TECHNICAL_SAMPLE_KEY=cctv
- 39: TECHNICAL_SAMPLE_KEY=commission
- 40: TECHNICAL_SAMPLE_KEY=surface
- 41: TECHNICAL_SAMPLE_KEY=marking
- 42: TECHNICAL_SAMPLE_KEY=final_survey
- 43: TECHNICAL_SAMPLE_KEY=documents
- 44: TECHNICAL_SAMPLE_KEY=preaccept
- 45: TECHNICAL_SAMPLE_KEY=rectify
- 46: TECHNICAL_SAMPLE_KEY=accept
