# 110kV 变电站一次设备安装与投运工程

Schedule from MS Project XML, 2027-06-07 to 2027-08-16.

## Calendars

- 标准工作周: Mon-Fri 08:00-12:00, 13:00-17:00; Sat-Sun off.

## Schedule

| ID | WBS | Task | Type | Duration | Start | Finish | Predecessors | Total slack | Free slack | Constraint |
| --- | --- | --- | --- | --- | --- | --- | --- | --- | --- | --- |
| 1 | 1 | **110kV 变电站一次设备安装与投运工程** |  | 51d | 2027-06-07 | 2027-08-16 |  | 0d |  |  |
| 2 | 1.1 | **工程准备** |  | 7d | 2027-06-07 | 2027-06-15 |  | 0d |  |  |
| 3 | 1.1.1 | 现场移交 | milestone | 0d | 2027-06-07 | 2027-06-07 |  | 0d |  | must start on 2027-06-07 |
| 4 | 1.1.2 | 设计交底 |  | 2d | 2027-06-07 | 2027-06-08 | 3 | 9d | 0d |  |
| 5 | 1.1.3 | 设备到货计划确认 |  | 3d | 2027-06-09 | 2027-06-11 | 4 | 11d | 0d |  |
| 6 | 1.1.4 | 施工组织设计审批 |  | 4d | 2027-06-09 | 2027-06-14 | 4 | 9d | 0d |  |
| 7 | 1.1.5 | 安全技术交底 |  | 1d | 2027-06-15 | 2027-06-15 | 6 | 9d | 0d |  |
| 8 | 1.1.6 | 安装开工条件确认 | milestone | 0d | 2027-06-15 | 2027-06-15 | 5, 7 | 9d | 0d |  |
| 9 | 1.2 | **一次设备安装** |  | 19d | 2027-06-16 | 2027-07-12 |  | 12d |  |  |
| 10 | 1.2.1 | **主变压器系统** |  | 19d | 2027-06-16 | 2027-07-12 |  | 12d |  |  |
| 11 | 1.2.1.1 | 主变基础复测 |  | 2d | 2027-06-16 | 2027-06-17 | 8 | 12d | 0d | start no earlier than 2027-06-10 |
| 12 | 1.2.1.2 | 主变到货 | milestone | 0d | 2027-06-16 | 2027-06-16 | 5FS+3d | 13d | 1d |  |
| 13 | 1.2.1.3 | 主变卸车就位 |  | 2d | 2027-06-18 | 2027-06-21 | 11, 12 | 12d | 0d |  |
| 14 | 1.2.1.4 | 主变附件安装 |  | 5d | 2027-06-23 | 2027-06-29 | 13FS+1d | 12d | 0d |  |
| 15 | 1.2.1.5 | 主变真空注油 |  | 3d | 2027-06-30 | 2027-07-02 | 14 | 12d | 0d |  |
| 16 | 1.2.1.6 | 绝缘油静置 |  | 2d | 2027-07-05 | 2027-07-06 | 15 | 12d | 0d |  |
| 17 | 1.2.1.7 | 主变交接试验 |  | 4d | 2027-07-07 | 2027-07-12 | 16 | 12d | 0d |  |
| 18 | 1.2.1.8 | 主变系统安装完成 | milestone | 0d | 2027-07-12 | 2027-07-12 | 17 | 12d |  |  |
| 19 | 1.2.2 | **GIS 系统** |  | 19d | 2027-06-16 | 2027-07-12 |  | 12d |  |  |
| 20 | 1.2.2.1 | GIS 基础复测 |  | 2d | 2027-06-16 | 2027-06-17 | 8 | 13d | 1d |  |
| 21 | 1.2.2.2 | GIS 设备到货 | milestone | 0d | 2027-06-21 | 2027-06-21 | 5FS+2d | 12d | 0d | start no earlier than 2027-06-21 |
| 22 | 1.2.2.3 | GIS 间隔安装 |  | 7d | 2027-06-21 | 2027-06-29 | 20, 21 | 12d | 0d |  |
| 23 | 1.2.2.4 | 母线连接 |  | 4d | 2027-06-30 | 2027-07-05 | 22 | 12d | 0d |  |
| 24 | 1.2.2.5 | SF6 充气与检漏 |  | 3d | 2027-07-06 | 2027-07-08 | 23 | 12d | 0d |  |
| 25 | 1.2.2.6 | GIS 交流耐压试验 |  | 2d | 2027-07-09 | 2027-07-12 | 24 | 12d | 0d |  |
| 26 | 1.2.2.7 | GIS 系统完成 | milestone | 0d | 2027-07-12 | 2027-07-12 | 25 | 12d |  |  |

Notes:
- 1: TECHNICAL_SAMPLE_KEY=root
- 2: TECHNICAL_SAMPLE_KEY=prep
- 3: TECHNICAL_SAMPLE_KEY=handover
- 4: TECHNICAL_SAMPLE_KEY=design
- 5: TECHNICAL_SAMPLE_KEY=delivery_plan
- 6: TECHNICAL_SAMPLE_KEY=method
- 7: TECHNICAL_SAMPLE_KEY=safety
- 8: TECHNICAL_SAMPLE_KEY=ready
- 9: TECHNICAL_SAMPLE_KEY=primary
- 10: TECHNICAL_SAMPLE_KEY=transformer
- 11: TECHNICAL_SAMPLE_KEY=tr_base
- 12: TECHNICAL_SAMPLE_KEY=tr_arrival
- 13: TECHNICAL_SAMPLE_KEY=tr_position
- 14: TECHNICAL_SAMPLE_KEY=tr_accessory
- 15: TECHNICAL_SAMPLE_KEY=tr_oil
- 16: TECHNICAL_SAMPLE_KEY=tr_settle
- 17: TECHNICAL_SAMPLE_KEY=tr_test
- 18: TECHNICAL_SAMPLE_KEY=tr_done
- 19: TECHNICAL_SAMPLE_KEY=gis
- 20: TECHNICAL_SAMPLE_KEY=gis_base
- 21: TECHNICAL_SAMPLE_KEY=gis_arrival
- 22: TECHNICAL_SAMPLE_KEY=gis_install
- 23: TECHNICAL_SAMPLE_KEY=bus
- 24: TECHNICAL_SAMPLE_KEY=sf6
- 25: TECHNICAL_SAMPLE_KEY=gis_test
- 26: TECHNICAL_SAMPLE_KEY=gis_done

| ID | WBS | Task | Type | Duration | Start | Finish | Predecessors | Total slack | Free slack | Constraint |
| --- | --- | --- | --- | --- | --- | --- | --- | --- | --- | --- |
| 27 | 1.3 | **二次系统安装与调试** |  | 36d | 2027-06-11 | 2027-08-02 |  | 0d |  |  |
| 28 | 1.3.1 | **盘柜与电缆** |  | 13d | 2027-06-16 | 2027-07-02 |  | 9d |  |  |
| 29 | 1.3.1.1 | 盘柜基础复测 |  | 1d | 2027-06-16 | 2027-06-16 | 8 | 9d | 0d |  |
| 30 | 1.3.1.2 | 保护屏及控制屏安装 |  | 4d | 2027-06-17 | 2027-06-22 | 29 | 17d | 8d |  |
| 31 | 1.3.1.3 | 电缆支架安装 |  | 5d | 2027-06-17 | 2027-06-23 | 29 | 9d | 0d |  |
| 32 | 1.3.1.4 | 二次电缆敷设 |  | 6d | 2027-06-18 | 2027-06-25 | 31SS+1d | 9d | 0d |  |
| 33 | 1.3.1.5 | 控制电缆校线 |  | 4d | 2027-06-22 | 2027-06-25 | 32FF | 9d | 0d |  |
| 34 | 1.3.1.6 | 端子接线 |  | 5d | 2027-06-28 | 2027-07-02 | 33 | 9d | 0d |  |
| 35 | 1.3.1.7 | 盘柜电缆安装完成 | milestone | 0d | 2027-07-02 | 2027-07-02 | 30, 34 | 9d | 0d |  |
| 36 | 1.3.2 | **继电保护调试** |  | 36d | 2027-06-11 | 2027-08-02 |  | 0d |  |  |
| 37 | 1.3.2.1 | 保护定值下发 | milestone | 0d | 2027-06-11 | 2027-06-11 | 5 | 24d | 15d |  |
| 38 | 1.3.2.2 | 保护装置单体校验 |  | 4d | 2027-07-05 | 2027-07-08 | 35, 37 | 9d | 0d |  |
| 39 | 1.3.2.3 | 二次回路传动 |  | 5d | 2027-07-09 | 2027-07-15 | 38 | 9d |  |  |
| 40 | 1.3.2.4 | 继保整组试验 |  | 3d | 2027-07-29 | 2027-08-02 | 39, 18, 26 | 0d |  | finish no earlier than 2027-08-02 |
| 41 | 1.3.2.5 | 继保调试完成 | milestone | 0d | 2027-08-02 | 2027-08-02 | 40 | 0d |  |  |
| 42 | 1.4 | **站用电与接地** |  | 10d | 2027-06-16 | 2027-06-29 |  | 26d |  |  |
| 43 | 1.4.1 | **接地系统** |  | 10d | 2027-06-16 | 2027-06-29 |  | 26d |  |  |
| 44 | 1.4.1.1 | 接地网施工 |  | 7d | 2027-06-16 | 2027-06-24 | 8 | 26d | 0d |  |
| 45 | 1.4.1.2 | 接地网隐蔽复测 |  | 3d | 2027-06-24 | 2027-06-28 | 44FS-1d | 26d | 0d |  |
| 46 | 1.4.1.3 | 接地电阻测试 |  | 1d | 2027-06-29 | 2027-06-29 | 45 | 26d | 0d |  |
| 47 | 1.4.1.4 | 接地系统完成 | milestone | 0d | 2027-06-29 | 2027-06-29 | 46 | 26d | 24d |  |
| 48 | 1.4.2 | **站用电系统** |  | 5d | 2027-06-16 | 2027-06-22 |  | 30d |  |  |
| 49 | 1.4.2.1 | 临时供电保障 |  | 2d | 2027-06-18 | 2027-06-22 | 8, 52SF | 40d |  |  |
| 50 | 1.4.2.2 | 站用变安装 |  | 4d | 2027-06-16 | 2027-06-21 | 8 | 30d | 0d |  |
| 51 | 1.4.2.3 | 低压柜安装 |  | 4d | 2027-06-16 | 2027-06-21 | 8 | 30d | 0d |  |
| 52 | 1.4.2.4 | 正式站用电切换 |  | 1d | 2027-06-22 | 2027-06-22 | 50, 51 | 30d | 0d |  |
| 53 | 1.4.2.5 | 站用电系统完成 | milestone | 0d | 2027-06-22 | 2027-06-22 | 52 | 30d | 29d |  |

Notes:
- 27: TECHNICAL_SAMPLE_KEY=secondary
- 28: TECHNICAL_SAMPLE_KEY=cable
- 29: TECHNICAL_SAMPLE_KEY=panel_base
- 30: TECHNICAL_SAMPLE_KEY=panel
- 31: TECHNICAL_SAMPLE_KEY=tray
- 32: TECHNICAL_SAMPLE_KEY=cable_lay
- 33: TECHNICAL_SAMPLE_KEY=wire_check
- 34: TECHNICAL_SAMPLE_KEY=terminal
- 35: TECHNICAL_SAMPLE_KEY=cable_done
- 36: TECHNICAL_SAMPLE_KEY=relay
- 37: TECHNICAL_SAMPLE_KEY=setting
- 38: TECHNICAL_SAMPLE_KEY=unit_test
- 39: TECHNICAL_SAMPLE_KEY=loop
- 40: TECHNICAL_SAMPLE_KEY=integrated
- 41: TECHNICAL_SAMPLE_KEY=relay_done
- 42: TECHNICAL_SAMPLE_KEY=auxiliary
- 43: TECHNICAL_SAMPLE_KEY=ground
- 44: TECHNICAL_SAMPLE_KEY=ground_install
- 45: TECHNICAL_SAMPLE_KEY=ground_review
- 46: TECHNICAL_SAMPLE_KEY=ground_test
- 47: TECHNICAL_SAMPLE_KEY=ground_done
- 48: TECHNICAL_SAMPLE_KEY=station_power
- 49: TECHNICAL_SAMPLE_KEY=temporary_power
- 50: TECHNICAL_SAMPLE_KEY=station_transformer
- 51: TECHNICAL_SAMPLE_KEY=lv_panel
- 52: TECHNICAL_SAMPLE_KEY=power_switch
- 53: TECHNICAL_SAMPLE_KEY=power_done

| ID | WBS | Task | Type | Duration | Start | Finish | Predecessors | Total slack | Constraint | Deadline |
| --- | --- | --- | --- | --- | --- | --- | --- | --- | --- | --- |
| 54 | 1.5 | **投运与验收** |  | 10d | 2027-08-03 | 2027-08-16 |  | 0d |  |  |
| 55 | 1.5.1 | 五防闭锁联调 |  | 3d | 2027-08-03 | 2027-08-05 | 41, 53 | 1d |  |  |
| 56 | 1.5.2 | 远动通信联调 |  | 4d | 2027-08-03 | 2027-08-06 | 41 | 0d |  |  |
| 57 | 1.5.3 | 并网前专项验收 |  | 2d | 2027-08-03 | 2027-08-04 | 26, 18, 41, 47, 53 | 2d | finish no later than 2027-09-30 |  |
| 58 | 1.5.4 | 投运前缺陷整改 |  | 3d | 2027-08-09 | 2027-08-11 | 55, 56, 57 | 0d |  |  |
| 59 | 1.5.5 | 受电方案批准 | milestone | 0d | 2027-08-11 | 2027-08-11 | 58 | 0d |  |  |
| 60 | 1.5.6 | 变电站受电投运 | milestone | 0d | 2027-08-11 | 2027-08-11 | 59 | 0d |  | 2027-10-15 |
| 61 | 1.5.7 | 72 小时试运行 |  | 3d | 2027-08-12 | 2027-08-16 | 60 | 0d |  |  |
| 62 | 1.5.8 | 工程移交 | milestone | 0d | 2027-08-16 | 2027-08-16 | 61 | 0d |  |  |

Notes:
- 54: TECHNICAL_SAMPLE_KEY=commissioning
- 55: TECHNICAL_SAMPLE_KEY=interlock
- 56: TECHNICAL_SAMPLE_KEY=remote
- 57: TECHNICAL_SAMPLE_KEY=pre_grid
- 58: TECHNICAL_SAMPLE_KEY=defect
- 59: TECHNICAL_SAMPLE_KEY=plan_approved
- 60: TECHNICAL_SAMPLE_KEY=energize
- 61: TECHNICAL_SAMPLE_KEY=trial
- 62: TECHNICAL_SAMPLE_KEY=handoff
